# 项目计划20130108

Schedule from MS Project, 2013-01-14 to 2013-02-22.
Microsoft

## Calendars

- 标准: Mon-Fri 08:00-12:00, 13:00-17:00; Sat-Sun off.

## Resources

| Resource |
| --- |
| 李锋 |
| 陈辉 |
| 刘小明 |
| 张建华 |
| 卢佳 |
| 李静 |
| 李智林 |
| 陈亮 |

## Schedule

| ID | WBS | Task | Duration | Start | Finish | Predecessors | Total slack | Free slack | Resources | Work |
| --- | --- | --- | --- | --- | --- | --- | --- | --- | --- | --- |
| 1 | 1 | **分析设计阶段** | 5d | 2013-01-14 | 2013-01-18 |  | 17d |  |  | 40h |
| 2 | 1.1 | 需求功能点文档 | 1d | 2013-01-14 | 2013-01-14 |  | 17d | 0d | 李锋 | 8h |
| 3 | 1.2 | 应用服务器接口文档 | 1d | 2013-01-15 | 2013-01-15 | 2 | 17d | 0d | 李锋 | 8h |
| 4 | 1.3 | 表结构设计 | 3d | 2013-01-16 | 2013-01-18 | 3 | 17d | 0d | 李锋 | 24h |
| 5 | 2 | **美工html页面设计阶段** | 8d? | 2013-01-21 | 2013-01-30 |  | 17d |  |  | 128h |
| 6 | 2.1 | 首页模板明信片设计图 | 1d? | 2013-01-21 | 2013-01-21 | 4 | 17d | 0d | 李锋; 李静 | 16h |
| 7 | 2.2 | 首页diy明信片设计图 | 1d? | 2013-01-22 | 2013-01-22 | 6 | 17d | 0d | 李锋; 李静 | 16h |
| 8 | 2.3 | 首页动态明信片设计图 | 1d? | 2013-01-23 | 2013-01-23 | 7 | 17d | 0d | 李锋; 李静 | 16h |
| 9 | 2.4 | 我的照片库设计图 | 1d? | 2013-01-24 | 2013-01-24 | 8 | 17d | 0d | 李锋; 李静 | 16h |
| 10 | 2.5 | 我的联系人设计图 | 1d? | 2013-01-25 | 2013-01-25 | 9 | 17d | 0d | 李锋; 李静 | 16h |
| 11 | 2.6 | 我的收藏夹设计图 | 1d? | 2013-01-28 | 2013-01-28 | 10 | 17d | 0d | 李锋; 李静 | 16h |
| 12 | 2.7 | 饰物图片 | 1d? | 2013-01-29 | 2013-01-29 | 11 | 17d | 0d | 李锋; 李静 | 16h |
| 13 | 2.8 | 模板明信片图片 | 1d? | 2013-01-30 | 2013-01-30 | 12 | 17d |  | 李锋; 李静 | 16h |
| 14 | 3 | **编码实现阶段** | 24d | 2013-01-14 | 2013-02-14 |  | 0d |  |  | 920h |
| 15 | 3.1 | **web前台开发** | 23d | 2013-01-14 | 2013-02-13 |  | 7d |  |  | 184h |
| 16 | 3.1.1 | 用户登录/注销退出 | 1d | 2013-01-14 | 2013-01-14 |  | 6d | 0d | 李智林 | 8h |
| 17 | 3.1.2 | DIY明信片挑照片管理 | 1d | 2013-01-15 | 2013-01-15 | 16 | 6d | 0d | 李智林 | 8h |
| 18 | 3.1.3 | 我的联系人管理 | 4d | 2013-01-16 | 2013-01-21 | 17 | 6d | 0d | 李智林 | 32h |
| 19 | 3.1.4 | 我的收藏夹管理 | 1d | 2013-01-22 | 2013-01-22 | 18 | 6d | 0d | 李智林 | 8h |
| 20 | 3.1.5 | 我的已发送 | 2d | 2013-01-23 | 2013-01-24 | 19 | 6d | 0d | 李智林 | 16h |
| 21 | 3.1.6 | 定时/发送模板明信片 | 2d | 2013-01-25 | 2013-01-28 | 20 | 6d | 0d | 李智林 | 16h |
| 22 | 3.1.7 | 定时/发送DIY明信片 | 6d | 2013-01-29 | 2013-02-05 | 21 | 6d | 0d | 李智林 | 48h |
| 23 | 3.1.8 | 定时/发送动态明信片 | 6d | 2013-02-06 | 2013-02-13 | 22 | 6d |  | 李智林 | 48h |
| 24 | 3.2 | **cms后台管理系统开发** | 14d | 2013-01-14 | 2013-01-31 |  | 16d |  |  | 176h |
| 25 | 3.2.1 | 用户角色权限管理 | 2d | 2013-01-14 | 2013-01-15 |  | 15d | 0d | 陈亮 | 16h |
| 26 | 3.2.2 | 最新推荐管理 | 2d | 2013-01-16 | 2013-01-17 | 25 | 15d | 0d | 陈亮 | 16h |
| 27 | 3.2.3 | 热点推荐管理 | 1d | 2013-01-18 | 2013-01-18 | 26 | 17d | 0d | 卢佳 | 8h |
| 28 | 3.2.4 | 服务记录查询 | 3d | 2013-01-21 | 2013-01-23 | 27 | 17d | 0d | 卢佳 | 24h |
| 29 | 3.2.5 | 模板明信片管理 | 2d | 2013-01-18 | 2013-01-21 | 26 | 15d | 0d | 陈亮 | 16h |
| 30 | 3.2.6 | 相框管理 | 1d | 2013-01-24 | 2013-01-24 | 28 | 17d | 0d | 卢佳 | 8h |
| 31 | 3.2.7 | 邮票管理 | 1d | 2013-01-25 | 2013-01-25 | 30 | 17d | 0d | 卢佳 | 8h |
| 32 | 3.2.8 | 邮戳管理 | 1d | 2013-01-28 | 2013-01-28 | 31 | 17d | 0d | 卢佳 | 8h |
| 33 | 3.2.9 | 饰物管理 | 2d | 2013-01-22 | 2013-01-23 | 29 | 15d | 0d | 陈亮 | 16h |
| 34 | 3.2.10 | 用户注册/注销日报 | 3d | 2013-01-24 | 2013-01-28 | 33 | 15d | 0d | 陈亮 | 24h |
| 35 | 3.2.11 | 用户注册/注销月报 | 3d | 2013-01-29 | 2013-01-31 | 34 | 15d |  | 陈亮 | 24h |
| 36 | 3.2.12 | 背景音乐管理 | 1d | 2013-01-29 | 2013-01-29 | 32 | 17d |  | 卢佳 | 8h |

| ID | WBS | Task | Duration | Start | Finish | Predecessors | Total slack | Free slack | Resources | Work |
| --- | --- | --- | --- | --- | --- | --- | --- | --- | --- | --- |
| 37 | 3.3 | **手机APP开发** | 24d | 2013-01-14 | 2013-02-14 |  | 6d |  |  | 192h |
| 38 | 3.3.1 | 用户sms注册 | 2d | 2013-01-14 | 2013-01-15 |  | 6d | 0d | 张建华 | 16h |
| 39 | 3.3.2 | 用户登录/注销退出 | 1d | 2013-01-16 | 2013-01-16 | 38 | 6d | 0d | 张建华 | 8h |
| 40 | 3.3.3 | 我的联系人管理 | 5d | 2013-01-17 | 2013-01-23 | 39 | 6d | 0d | 张建华 | 40h |
| 41 | 3.3.4 | 我的收藏夹管理 | 2d | 2013-01-24 | 2013-01-25 | 40 | 6d | 0d | 张建华 | 16h |
| 42 | 3.3.5 | 定时/发送模板明信片 | 1d | 2013-01-28 | 2013-01-28 | 41 | 6d | 0d | 张建华 | 8h |
| 43 | 3.3.6 | 定时/发送DIY明信片 | 6d | 2013-01-29 | 2013-02-05 | 42 | 6d | 0d | 张建华 | 48h |
| 44 | 3.3.7 | 定时/发送动态明信片 | 6d | 2013-02-06 | 2013-02-13 | 43 | 6d | 0d | 张建华 | 48h |
| 45 | 3.3.8 | 收藏模板明信片 | 1d | 2013-02-14 | 2013-02-14 | 44 | 6d |  | 张建华 | 8h |
| 46 | 3.4 | **应用服务器开发** | 24d | 2013-01-14 | 2013-02-14 |  | 0d |  |  | 368h |
| 47 | 3.4.1 | **sms接口** | 8d | 2013-01-14 | 2013-01-23 |  | 0d |  |  | 64h |
| 48 | 3.4.1.1 | SMS-SGIP协议实现 | 2d | 2013-01-14 | 2013-01-15 |  | 0d |  | 陈辉 | 16h |
| 49 | 3.4.1.2 | SMS模块代码框架搭建以及与短信网关通信开发 | 2d | 2013-01-16 | 2013-01-17 | 48 | 0d |  | 陈辉 | 16h |
| 50 | 3.4.1.3 | 业务逻辑实现【上行消息处理】 | 2d | 2013-01-18 | 2013-01-21 | 49 | 0d |  | 陈辉 | 16h |
| 51 | 3.4.1.4 | 业务逻辑实现【上行状态报告处理】【下行短信处理】 | 1d | 2013-01-22 | 2013-01-22 | 50 | 0d |  | 陈辉 | 8h |
| 52 | 3.4.1.5 | SMS模块与其它内部调用接口开发 | 1d | 2013-01-23 | 2013-01-23 | 51 | 0d |  | 陈辉 | 8h |
| 53 | 3.4.2 | **mms接口** | 10d | 2013-01-24 | 2013-02-06 |  | 0d |  |  | 80h |
| 54 | 3.4.2.1 | MMS协议实现 | 2d | 2013-01-24 | 2013-01-25 | 52 | 0d |  | 陈辉 | 16h |
| 55 | 3.4.2.2 | MMS与彩信中心交互逻辑开发 | 3d | 2013-01-28 | 2013-01-30 | 54 | 0d |  | 陈辉 | 24h |
| 56 | 3.4.2.3 | 业务逻辑实现【下发彩信内部接口功能开发，定时发送等】 | 3d | 2013-01-31 | 2013-02-04 | 55 | 0d |  | 陈辉 | 24h |
| 57 | 3.4.2.4 | 业务逻辑实现【上行状态报告处理】 | 1d | 2013-02-05 | 2013-02-05 | 56 | 0d |  | 陈辉 | 8h |
| 58 | 3.4.2.5 | SMS模块与其它内部调用接口开发 | 1d | 2013-02-06 | 2013-02-06 | 57 | 0d |  | 陈辉 | 8h |
| 59 | 3.4.3 | **vac接口** | 4d | 2013-02-07 | 2013-02-12 |  | 0d |  |  | 32h |
| 60 | 3.4.3.1 | 与VAC客户端的接口实现 | 1d | 2013-02-07 | 2013-02-07 | 58 | 0d |  | 陈辉 | 8h |
| 61 | 3.4.3.2 | 注册流程开发 | 2d | 2013-02-08 | 2013-02-11 | 60 | 0d |  | 陈辉 | 16h |
| 62 | 3.4.3.3 | 提供webservices内部访问接口 | 1d | 2013-02-12 | 2013-02-12 | 61 | 0d |  | 陈辉 | 8h |

| ID | WBS | Task | Duration | Start | Finish | Predecessors | Total slack | Free slack | Resources | Work |
| --- | --- | --- | --- | --- | --- | --- | --- | --- | --- | --- |
| 63 | 3.4.4 | **业务逻辑webservice接口** | 24d | 2013-01-14 | 2013-02-14 |  | 6d |  |  | 192h |
| 64 | 3.4.4.1 | 写服务记录 | 2d | 2013-01-14 | 2013-01-15 |  | 5d | 0d | 刘小明 | 16h |
| 65 | 3.4.4.2 | 添加修改删除联系人 | 1d | 2013-01-16 | 2013-01-16 | 64 | 5d | 0d | 刘小明 | 8h |
| 66 | 3.4.4.3 | 添加修改删除联系人分组 | 1d | 2013-01-17 | 2013-01-17 | 65 | 5d | 0d | 刘小明 | 8h |
| 67 | 3.4.4.4 | 添加删除照片、分类 | 1d | 2013-01-18 | 2013-01-18 | 66 | 5d | 0d | 刘小明 | 8h |
| 68 | 3.4.4.5 | 收藏模板明信片 | 1d | 2013-01-21 | 2013-01-21 | 67 | 5d | 0d | 刘小明 | 8h |
| 69 | 3.4.4.6 | 定时/发送模板明信片 | 3d | 2013-01-22 | 2013-01-24 | 68 | 5d | 0d | 刘小明 | 24h |
| 70 | 3.4.4.7 | 定时/发送DIY明信片 | 3d | 2013-01-25 | 2013-01-29 | 69 | 5d | 0d | 刘小明 | 24h |
| 71 | 3.4.4.8 | 定时/发送动态明信片 | 3d | 2013-01-30 | 2013-02-01 | 70 | 5d | 0d | 刘小明 | 24h |
| 72 | 3.4.4.9 | 添加修改删除模板明信片分类 | 1d | 2013-02-04 | 2013-02-04 | 71 | 5d | 0d | 刘小明 | 8h |
| 73 | 3.4.4.10 | 添加修改删除饰物分类 | 2d | 2013-02-05 | 2013-02-06 | 72 | 5d | 0d | 刘小明 | 16h |
| 74 | 3.4.4.11 | 添加删除模板明信片 | 1d | 2013-02-07 | 2013-02-07 | 73 | 5d | 0d | 刘小明 | 8h |
| 75 | 3.4.4.12 | 添加删除饰物 | 3d | 2013-02-08 | 2013-02-12 | 74 | 5d | 0d | 刘小明 | 24h |
| 76 | 3.4.4.13 | 添加修改模板明信片最新推荐 | 1d | 2013-02-13 | 2013-02-13 | 75 | 5d | 0d | 刘小明 | 8h |
| 77 | 3.4.4.14 | 添加修改模板明信片最热推荐 | 1d | 2013-02-14 | 2013-02-14 | 76 | 5d |  | 刘小明 | 8h |
| 78 | 4 | **接口联调阶段** | 7d | 2013-02-13 | 2013-02-21 |  | 0d |  |  | 56h |
| 79 | 4.1 | vac接口联调 | 2d | 2013-02-13 | 2013-02-14 | 62 | 0d |  | 陈辉 | 16h |
| 80 | 4.2 | mms gw接口联调 | 3d | 2013-02-15 | 2013-02-19 | 79 | 0d |  | 陈辉 | 24h |
| 81 | 4.3 | smsgw 接口联调 | 2d | 2013-02-20 | 2013-02-21 | 80 | 0d |  | 陈辉 | 16h |
| 82 | 5 | **集成测试阶段** | 1d? | 2013-02-22 | 2013-02-22 | 78 | 0d |  |  |  |
| 83 | 5.1 | 用户注册 | 1d? | 2013-02-22 | 2013-02-22 |  | 0d |  |  |  |
| 84 | 5.2 | 用户注销 | 1d? | 2013-02-22 | 2013-02-22 |  | 0d |  |  |  |
| 85 | 5.3 | 发送模板明信片 | 1d? | 2013-02-22 | 2013-02-22 |  | 0d |  |  |  |
| 86 | 5.4 | 发送DIY明信片 | 1d? | 2013-02-22 | 2013-02-22 |  | 0d |  |  |  |
| 87 | 5.5 | 发送动态明信片 | 1d? | 2013-02-22 | 2013-02-22 |  | 0d |  |  |  |
| 88 | 5.6 | 定时发送模板明信片 | 1d? | 2013-02-22 | 2013-02-22 |  | 0d |  |  |  |
| 89 | 5.7 | 定时发送DIY明信片 | 1d? | 2013-02-22 | 2013-02-22 |  | 0d |  |  |  |
| 90 | 5.8 | 定时发送动态明信片 | 1d? | 2013-02-22 | 2013-02-22 |  | 0d |  |  |  |
| 91 | 5.9 | 上传管理照片 | 1d? | 2013-02-22 | 2013-02-22 |  | 0d |  |  |  |
| 92 | 5.10 | 管理联系人 | 1d? | 2013-02-22 | 2013-02-22 |  | 0d |  |  |  |
| 93 | 5.11 | 收藏模板明信片 | 1d? | 2013-02-22 | 2013-02-22 |  | 0d |  |  |  |
