Schedule from MS Project, 2013-07-15 to 2014-02-03.
Microsoft

## Calendars

- 标准: Mon-Fri 08:00-12:00, 13:00-17:00; Sat-Sun off. Exceptions (off unless hours are given): 2013-10-12 08:00-12:00, 13:00-17:00.

## Resources

| Resource |
| --- |
| 陈亮 |
| 周文 |
| 陈毅文 |
| 张金华 |
| 周雯 |

## Schedule

| ID | WBS | Task | Type | Duration | Start | Finish | Predecessors | Total slack | Free slack | Constraint | Resources | Work | 分配人 |
| --- | --- | --- | --- | --- | --- | --- | --- | --- | --- | --- | --- | --- | --- |
| 1 | 1 | **分析设计阶段** |  | 15d | 2013-07-15 | 2013-08-02 |  |  |  |  |  | 120h |  |
| 2 | 1.1 | 需求功能点文档 |  | 7d | 2013-07-15 | 2013-07-23 |  | 0d |  |  | 陈亮 | 56h | 陈亮 |
| 3 | 1.2 | 原型设计(UI) |  | 4d | 2013-07-24 | 2013-07-29 | 2 | 0d |  |  | 陈亮 | 32h | 陈亮 |
| 4 | 1.3 | 表结构设计 |  | 4d | 2013-07-30 | 2013-08-02 | 3 | 0d |  |  | 陈亮 | 32h | 陈亮 |
| 5 | 2 | **美工页面设计** |  | 9d | 2013-10-08 | 2013-10-17 |  |  |  |  |  | 128h |  |
| 6 | 2.1 | 登陆页面设计图 |  | 1d | 2013-10-08 | 2013-10-08 | 4 | 1d | 0d |  | 周雯 | 8h | 周文 |
| 7 | 2.2 | 注册页面设计图 |  | 1d | 2013-10-08 | 2013-10-08 | 4 | 1d | 0d |  | 周雯 | 8h | 周文 |
| 8 | 2.3 | 首页康讯云计算设计图 |  | 1d | 2013-10-09 | 2013-10-09 | 6 | 1d | 0d |  | 周雯 | 8h | 周文 |
| 9 | 2.4 | 云服务产品详情设计图 |  | 1d | 2013-10-09 | 2013-10-09 | 7 | 1d | 0d |  | 周雯 | 8h | 周文 |
| 10 | 2.5 | 云服务购买(下单)设计图 |  | 1d | 2013-10-10 | 2013-10-10 | 8 | 1d | 0d |  | 周雯 | 8h | 周文 |
| 11 | 2.6 | 云服务试用设计图 |  | 1d | 2013-10-10 | 2013-10-10 | 9 | 1d | 0d |  | 周雯 | 8h | 周文 |
| 12 | 2.7 | 管理控制台设计图 |  | 1d | 2013-10-11 | 2013-10-11 | 10 | 1d | 0d |  | 周雯 | 8h | 周文 |
| 13 | 2.8 | 虚机详情设计图 |  | 1d | 2013-10-11 | 2013-10-11 | 11 | 1d | 0d |  | 周雯 | 8h | 周文 |
| 14 | 2.9 | 确认订单设计图 |  | 1d | 2013-10-12 | 2013-10-12 | 12 | 1d | 0d | start no earlier than 2013-10-12 | 周雯 | 8h | 周文 |
| 15 | 2.10 | 我的订单设计图 |  | 1d | 2013-10-12 | 2013-10-12 | 13 | 1d | 0d |  | 周雯 | 8h | 周文 |
| 16 | 2.11 | 我的订单详情设计图 |  | 1d | 2013-10-14 | 2013-10-14 | 14 | 1d | 0d |  | 周雯 | 8h | 周文 |
| 17 | 2.12 | 我的账户设计图 |  | 1d | 2013-10-14 | 2013-10-14 | 15 | 1d | 0d |  | 周雯 | 8h | 周文 |
| 18 | 2.13 | 修改资本资料设计图 |  | 1d | 2013-10-15 | 2013-10-15 | 16 | 1d | 0d |  | 周雯 | 8h | 周文 |
| 19 | 2.14 | 修改密码设计图 |  | 1d | 2013-10-15 | 2013-10-15 | 17 | 1d | 0d |  | 周雯 | 8h | 周文 |
| 20 | 2.15 | 设置密保问题设计图 |  | 1d | 2013-10-16 | 2013-10-16 | 18 | 1d | 0d |  | 周雯 | 8h | 周文 |
| 21 | 2.16 | 云服务使用申请列表设计图 |  | 1d | 2013-10-16 | 2013-10-16 | 19 | 1d |  |  | 周雯 | 8h | 周文 |
| 22 | 3 | 评审页面设计 | milestone, manual | 0d | 2013-10-22 | 2013-10-22 |  |  |  |  |  |  |  |
| 23 | 4 | **编码实现阶段** |  | 86d | 2013-10-08 | 2014-02-03 |  |  |  |  |  | 1012h |  |
| 24 | 4.1 | **静态页面开发** |  | 1d? | 2013-10-08 | 2013-10-08 |  | 0d |  |  |  |  |  |
| 25 | 4.1.1 | 登陆页面设计图 |  | 1d? | 2013-10-08 | 2013-10-08 |  | 85d |  |  |  |  |  |
| 26 | 4.1.2 | 注册页面设计图 |  | 1d? | 2013-10-08 | 2013-10-08 |  | 85d |  |  |  |  |  |
| 27 | 4.1.3 | 首页康讯云计算设计图 |  | 1d? | 2013-10-08 | 2013-10-08 |  | 85d |  |  |  |  |  |
| 28 | 4.1.4 | 云服务产品详情设计图 |  | 1d? | 2013-10-08 | 2013-10-08 |  | 85d |  |  |  |  |  |
| 29 | 4.1.5 | 云服务购买(下单)设计图 |  | 1d? | 2013-10-08 | 2013-10-08 |  | 85d |  |  |  |  |  |
| 30 | 4.1.6 | 云服务试用设计图 |  | 1d? | 2013-10-08 | 2013-10-08 |  | 85d |  |  |  |  |  |
| 31 | 4.1.7 | 管理控制台设计图 |  | 1d? | 2013-10-08 | 2013-10-08 |  | 85d |  |  |  |  |  |
| 32 | 4.1.8 | 虚机详情设计图 |  | 1d? | 2013-10-08 | 2013-10-08 |  | 85d |  |  |  |  |  |
| 33 | 4.1.9 | 确认订单设计图 |  | 1d? | 2013-10-08 | 2013-10-08 |  | 85d |  |  |  |  |  |
| 34 | 4.1.10 | 我的订单设计图 |  | 1d? | 2013-10-08 | 2013-10-08 |  | 85d |  |  |  |  |  |
| 35 | 4.1.11 | 我的订单详情设计图 |  | 1d? | 2013-10-08 | 2013-10-08 |  | 85d |  |  |  |  |  |
| 36 | 4.1.12 | 我的账户设计图 |  | 1d? | 2013-10-08 | 2013-10-08 |  | 85d |  |  |  |  |  |
| 37 | 4.1.13 | 修改资本资料设计图 |  | 1d? | 2013-10-08 | 2013-10-08 |  | 85d |  |  |  |  |  |
| 38 | 4.1.14 | 修改密码设计图 |  | 1d? | 2013-10-08 | 2013-10-08 |  | 85d |  |  |  |  |  |
| 39 | 4.1.15 | 设置密保问题设计图 | manual | 1d? | 2013-10-08 | 2013-10-08 |  |  |  |  |  |  |  |
| 40 | 4.1.16 | 云服务使用申请列表设计图 |  | 1d? | 2013-10-08 | 2013-10-08 |  | 85d |  |  |  |  |  |

| ID | WBS | Task | Duration | Start | Finish | Predecessors | Total slack | Free slack | Constraint | Resources | Work | 分配人 |
| --- | --- | --- | --- | --- | --- | --- | --- | --- | --- | --- | --- | --- |
| 41 | 4.2 | **web前台开发** | 55d | 2013-10-17 | 2014-01-01 |  |  |  |  |  | 232h |  |
| 42 | 4.2.1 | 用户权限管理 | 4d | 2013-10-17 | 2013-10-22 | 20 | 74d |  | start no earlier than 2013-10-17 | 陈亮 | 32h | 陈亮 |
| 43 | 4.2.2 | **用户中心** | 11d | 2013-10-29 | 2013-11-12 |  |  |  |  |  | 88h |  |
| 44 | 4.2.2.1 | 用户注册 | 3d | 2013-10-29 | 2013-10-31 | 21 | 0d |  | start no earlier than 2013-10-29 | 陈亮 | 24h | 陈亮 |
| 45 | 4.2.2.2 | 用户登陆 | 2d | 2013-11-01 | 2013-11-04 | 44 | 0d |  |  | 陈亮 | 16h | 陈亮 |
| 46 | 4.2.2.3 | 查看个人信息 | 1d | 2013-11-05 | 2013-11-05 | 45 | 0d |  |  | 陈亮 | 8h | 陈亮 |
| 47 | 4.2.2.4 | 个人资料修改 | 2d | 2013-11-06 | 2013-11-07 | 46 | 0d |  |  | 陈亮 | 16h | 陈亮 |
| 48 | 4.2.2.5 | 密码修改 | 1d | 2013-11-08 | 2013-11-08 | 47 | 0d |  |  | 陈亮 | 8h | 陈亮 |
| 49 | 4.2.2.6 | 密码保护问题 | 2d | 2013-11-11 | 2013-11-12 | 48 | 0d |  |  | 陈亮 | 16h | 陈亮 |
| 50 | 4.2.3 | **订单** | 10d | 2013-11-12 | 2013-11-25 |  |  |  |  |  | 80h |  |
| 51 | 4.2.3.1 | 下单 | 3d | 2013-11-12 | 2013-11-14 |  | 0d |  | start no earlier than 2013-11-12 | 陈亮 | 24h | 陈亮 |
| 52 | 4.2.3.2 | 确认订单 | 1d | 2013-11-15 | 2013-11-15 | 51 | 0d |  |  | 陈亮 | 8h | 陈亮 |
| 53 | 4.2.3.3 | 提交审核 | 1d | 2013-11-18 | 2013-11-18 | 52 | 0d |  |  | 陈亮 | 8h | 陈亮 |
| 54 | 4.2.3.4 | 订单查看 | 1d | 2013-11-19 | 2013-11-19 | 53 | 0d |  |  | 陈亮 | 8h | 陈亮 |
| 55 | 4.2.3.5 | 订单详情 | 1d | 2013-11-20 | 2013-11-20 | 54 | 0d |  | start no earlier than 2013-09-16 | 陈亮 | 8h | 陈亮 |
| 56 | 4.2.3.6 | 订单作废 | 1d | 2013-11-21 | 2013-11-21 | 55 | 0d |  |  | 陈亮 | 8h | 陈亮 |
| 57 | 4.2.3.7 | 升级 | 2d | 2013-11-22 | 2013-11-25 | 56 | 0d |  |  | 陈亮 | 16h | 陈亮 |
| 58 | 4.2.4 | **首页** | 4d | 2013-10-23 | 2013-10-28 |  |  |  |  |  | 32h |  |
| 59 | 4.2.4.1 | 产品与服务列表 | 2d | 2013-10-23 | 2013-10-24 |  | 0d |  | start no earlier than 2013-10-23 | 陈亮 | 16h | 陈亮 |
| 60 | 4.2.4.2 | 产品介绍 | 2d | 2013-10-25 | 2013-10-28 | 59 | 0d |  |  | 陈亮 | 16h | 陈亮 |
| 61 | 4.3 | **cms后台管理系统开发** | 50d | 2013-11-26 | 2014-02-03 |  |  |  |  |  | 284h |  |
| 62 | 4.3.1 | 用户管理 | 2d | 2013-11-26 | 2013-11-27 |  | 14.5d | 0d | start no earlier than 2013-11-26 | 陈亮 | 16h | 陈亮 |
| 63 | 4.3.2 | 权限管理 | 2d | 2013-11-28 | 2013-11-29 | 62 | 14.5d | 0d | start no earlier than 2013-09-30 | 陈亮 | 16h | 陈亮 |
| 64 | 4.3.3 | 查看订单 | 1d | 2013-12-02 | 2013-12-02 | 63 | 14.5d | 0d | start no earlier than 2013-12-02 | 陈亮 | 8h | 陈亮 |
| 65 | 4.3.4 | 删除订单 | 1d | 2013-12-03 | 2013-12-03 | 64 | 14.5d | 0d |  | 陈亮 | 8h | 陈亮 |
| 66 | 4.3.5 | 审核订单 | 1d | 2013-12-04 | 2013-12-04 | 65 | 14.5d | 0d |  | 陈亮 | 8h | 陈亮 |
| 67 | 4.3.6 | 租户列表 | 1d | 2013-12-05 | 2013-12-05 | 66 | 14.5d | 0d |  | 陈亮 | 8h | 陈亮 |
| 68 | 4.3.7 | 禁用租户 | 1d | 2013-12-06 | 2013-12-06 | 67 | 14.5d | 0d | start no earlier than 2013-10-07 | 陈亮 | 8h | 陈亮 |
| 69 | 4.3.8 | 初始化租户密码 | 1d | 2013-12-09 | 2013-12-09 | 68 | 14.5d | 0d |  | 陈亮 | 8h | 陈亮 |
| 70 | 4.3.9 | 产品与服务配置管理 | 2d | 2013-12-10 | 2013-12-11 | 69 | 14.5d | 0d |  | 陈亮 | 16h | 陈亮 |
| 71 | 4.3.10 | VMM列表 | 1d | 2013-12-12 | 2013-12-12 | 70 | 14.5d | 0d |  | 陈亮 | 8h | 陈亮 |
| 72 | 4.3.11 | VMM开机 | 1.5d | 2013-12-13 | 2013-12-16 | 71 | 14.5d | 0d |  | 陈亮 | 12h | 陈亮 |
| 73 | 4.3.12 | VMM关机 | 1d | 2013-12-16 | 2013-12-17 | 72 | 14.5d | 0d | start no earlier than 2013-11-14 | 陈亮 | 8h | 陈亮 |
| 74 | 4.3.13 | VMM重启 | 1d | 2013-12-17 | 2013-12-18 | 73 | 14.5d | 0d |  | 陈亮 | 8h | 陈亮 |
| 75 | 4.3.14 | VMM重装系统 | 2d | 2013-12-18 | 2013-12-20 | 74 | 14.5d | 0d |  | 陈亮 | 16h | 陈亮 |
| 76 | 4.3.15 | VMM预装软件 | 2d | 2013-12-20 | 2013-12-24 | 75 | 14.5d | 0d |  | 陈亮 | 16h | 陈亮 |
| 77 | 4.3.16 | VMM详细信息查看 | 1d | 2013-12-24 | 2013-12-25 | 76 | 14.5d | 0d |  | 陈亮 | 8h | 陈亮 |
| 78 | 4.3.17 | 添加ISO镜像 | 1d | 2013-12-25 | 2013-12-26 | 77 | 14.5d | 0d |  | 陈亮 | 8h | 陈亮 |
| 79 | 4.3.18 | 查询ISO镜像 | 1d | 2013-12-26 | 2013-12-27 | 78 | 14.5d | 0d |  | 陈亮 | 8h | 陈亮 |
| 80 | 4.3.19 | 删除ISO镜像 | 1d | 2013-12-27 | 2013-12-30 | 79 | 14.5d | 0d |  | 陈亮 | 8h | 陈亮 |
| 81 | 4.3.20 | 修改ISO镜像 | 1d | 2013-12-30 | 2013-12-31 | 80 | 14.5d | 0d |  | 陈亮 | 8h | 陈亮 |
| 82 | 4.3.21 | 查询虚拟机与租户关系列表 | 1d | 2013-12-31 | 2014-01-01 | 81 | 14.5d | 0d |  | 陈亮 | 8h | 陈亮 |
| 83 | 4.3.22 | 修改虚拟机与租户关系 | 1d | 2014-01-01 | 2014-01-02 | 82 | 14.5d | 0d |  | 陈亮 | 8h | 陈亮 |
| 84 | 4.3.23 | 删除虚拟机与租户关系 | 1d | 2014-01-02 | 2014-01-03 | 83 | 14.5d | 0d |  | 陈亮 | 8h | 陈亮 |
| 85 | 4.3.24 | 虚拟网络交换机列表 | 2d | 2014-01-03 | 2014-01-07 | 84 | 14.5d | 0d |  | 陈亮 | 16h | 陈亮 |
| 86 | 4.3.25 | 虚拟机网络交换机详情信息 | 1d | 2014-01-07 | 2014-01-08 | 85 | 14.5d | 0d |  | 陈亮 | 8h | 陈亮 |
| 87 | 4.3.26 | 添加域用户 | 1d | 2014-01-08 | 2014-01-09 | 86 | 14.5d | 0d |  | 陈亮 | 8h | 陈亮 |
| 88 | 4.3.27 | 域用户列表 | 1d | 2014-01-09 | 2014-01-10 | 87 | 14.5d | 0d | start no earlier than 2013-11-18 | 陈亮 | 8h | 陈亮 |
| 89 | 4.3.28 | 编辑域用户 | 1d | 2014-01-10 | 2014-01-13 | 88 | 14.5d | 0d |  | 陈亮 | 8h | 陈亮 |
| 90 | 4.3.29 | 删除域用户 | 1d | 2014-01-13 | 2014-01-14 | 89 | 14.5d |  |  | 陈亮 | 8h | 陈亮 |

| ID | WBS | Task | Duration | Start | Finish | Predecessors | Total slack | Constraint | Resources | Work | 分配人 |
| --- | --- | --- | --- | --- | --- | --- | --- | --- | --- | --- | --- |
| 91 | 4.4 | **应用服务器开发** | 20d | 2013-10-30 | 2013-11-26 |  |  |  |  | 496h |  |
| 92 | 4.4.1 | **PowerShell接口开发** | 14d | 2013-10-12 | 2013-10-30 |  |  |  |  | 448h |  |
| 93 | 4.4.1.1 | 创建域用户 | 1d | 2013-10-12 | 2013-10-12 |  | 0d | start no earlier than 2013-10-12 | 张金华; 陈毅文 | 16h | 陈亮,陈毅文 |
| 94 | 4.4.1.2 | 修改域用户 | 1d | 2013-10-12 | 2013-10-12 |  | 0d |  | 张金华; 陈毅文 | 16h | 陈亮,陈毅文 |
| 95 | 4.4.1.3 | 删除域用户 | 1d | 2013-10-14 | 2013-10-14 | 93 | 0d |  | 张金华; 陈毅文 | 16h | 陈亮,陈毅文 |
| 96 | 4.4.1.4 | 查询域用户 | 1d | 2013-10-14 | 2013-10-14 | 94 | 0d |  | 张金华; 陈毅文 | 16h | 陈亮,陈毅文 |
| 97 | 4.4.1.5 | 创建VM | 1d | 2013-10-15 | 2013-10-15 | 95 | 0d |  | 张金华; 陈毅文 | 16h | 陈亮,陈毅文 |
| 98 | 4.4.1.6 | 修改VM | 1d | 2013-10-15 | 2013-10-15 | 96 | 0d |  | 张金华; 陈毅文 | 16h | 陈亮,陈毅文 |
| 99 | 4.4.1.7 | 删除VM | 1d | 2013-10-16 | 2013-10-16 | 97 | 0d |  | 张金华; 陈毅文 | 16h | 陈亮,陈毅文 |
| 100 | 4.4.1.8 | 获取所有VM | 1d | 2013-10-16 | 2013-10-16 | 98 | 0d |  | 张金华; 陈毅文 | 16h | 陈亮,陈毅文 |
| 101 | 4.4.1.9 | VM开机 | 1d | 2013-10-17 | 2013-10-17 | 99 | 0d |  | 张金华; 陈毅文 | 16h | 陈亮,陈毅文 |
| 102 | 4.4.1.10 | VM关机 | 1d | 2013-10-17 | 2013-10-17 | 100 | 0d |  | 张金华; 陈毅文 | 16h | 陈亮,陈毅文 |
| 103 | 4.4.1.11 | VM重启 | 1d | 2013-10-18 | 2013-10-18 | 101 | 0d |  | 张金华; 陈毅文 | 16h | 陈亮,陈毅文 |
| 104 | 4.4.1.12 | VM重装系统 | 1d | 2013-10-18 | 2013-10-18 | 102 | 0d |  | 张金华; 陈毅文 | 16h | 陈亮,陈毅文 |
| 105 | 4.4.1.13 | VM预装软件 | 1d | 2013-10-21 | 2013-10-21 | 103 | 0d |  | 张金华; 陈毅文 | 16h | 陈亮,陈毅文 |
| 106 | 4.4.1.14 | 获取VM的CPU数量 | 1d | 2013-10-21 | 2013-10-21 | 104 | 0d |  | 张金华; 陈毅文 | 16h | 陈亮,陈毅文 |
| 107 | 4.4.1.15 | 获取VM内存 | 1d | 2013-10-22 | 2013-10-22 | 105 | 0d |  | 张金华; 陈毅文 | 16h | 陈亮,陈毅文 |
| 108 | 4.4.1.16 | 获取VM进程 | 1d | 2013-10-22 | 2013-10-22 | 106 | 0d |  | 张金华; 陈毅文 | 16h | 陈亮,陈毅文 |
| 109 | 4.4.1.17 | 获取硬盘大小 | 1d | 2013-10-23 | 2013-10-23 | 107 | 0d |  | 张金华; 陈毅文 | 16h | 陈亮,陈毅文 |
| 110 | 4.4.1.18 | 删除VM | 1d | 2013-10-23 | 2013-10-23 | 108 | 0d |  | 张金华; 陈毅文 | 16h | 陈亮,陈毅文 |
| 111 | 4.4.1.19 | 设置VM的CPU个数 | 1d | 2013-10-24 | 2013-10-24 | 109 | 0d |  | 张金华; 陈毅文 | 16h | 陈亮,陈毅文 |
| 112 | 4.4.1.20 | 设置VM内存 | 1d | 2013-10-24 | 2013-10-24 | 110 | 0d |  | 张金华; 陈毅文 | 16h | 陈亮,陈毅文 |
| 113 | 4.4.1.21 | 设置硬盘大小 | 1d | 2013-10-25 | 2013-10-25 | 111 | 0d |  | 张金华; 陈毅文 | 16h | 陈亮,陈毅文 |
| 114 | 4.4.1.22 | 设置虚拟串行端口 | 1d | 2013-10-25 | 2013-10-25 | 112 | 0d |  | 张金华; 陈毅文 | 16h | 陈亮,陈毅文 |
| 115 | 4.4.1.23 | 设置VM群集设置 | 1d | 2013-10-28 | 2013-10-28 | 113 | 0d |  | 张金华; 陈毅文 | 16h | 陈亮,陈毅文 |
| 116 | 4.4.1.24 | 获取VM主机名 | 1d | 2013-10-28 | 2013-10-28 | 114 | 0d |  | 张金华; 陈毅文 | 16h | 陈亮,陈毅文 |
| 117 | 4.4.1.25 | 获取VM摘要 | 1d | 2013-10-29 | 2013-10-29 | 115 | 0d |  | 张金华; 陈毅文 | 16h | 陈亮,陈毅文 |
| 118 | 4.4.1.26 | 获取VM缩略图 | 1d | 2013-10-29 | 2013-10-29 | 116 | 0d |  | 张金华; 陈毅文 | 16h | 陈亮,陈毅文 |
| 119 | 4.4.1.27 | 设置VM主机名 | 1d | 2013-10-30 | 2013-10-30 | 117 | 0d |  | 张金华; 陈毅文 | 16h | 陈亮,陈毅文 |
| 120 | 4.4.1.28 | 设置VM状态 | 1d | 2013-10-30 | 2013-10-30 | 118 | 0d |  | 张金华; 陈毅文 | 16h | 陈亮,陈毅文 |

| ID | WBS | Task | Duration | Start | Finish | Predecessors | Total slack | Constraint | Resources | Work | 分配人 |
| --- | --- | --- | --- | --- | --- | --- | --- | --- | --- | --- | --- |
| 121 | 4.4.2 | **定时任务开发** | 6d | 2014-01-15 | 2014-01-22 |  |  |  |  | 48h |  |
| 122 | 4.4.2.1 | 自动扫描已付款订单,创建虚拟机 | 3d | 2014-01-15 | 2014-01-17 | 119 | 3d |  | 陈亮 | 24h | 陈亮 |
| 123 | 4.4.2.2 | 产品使用到期提醒 | 3d | 2014-01-20 | 2014-01-22 | 120 | 2d | start no earlier than 2014-01-20 | 陈亮 | 24h | 陈亮 |
| 124 | 5 | **集成测试阶段** | 8d | 2014-01-23 | 2014-02-03 |  |  |  |  | 64h |  |
| 125 | 5.1 | 用户下单 | 1d | 2014-01-23 | 2014-01-23 |  | 7d | start no earlier than 2014-01-23 | 陈亮 | 8h | 陈亮 |
| 126 | 5.2 | 创建VM | 1d | 2014-01-24 | 2014-01-24 | 122 | 6d | start no earlier than 2014-01-24 | 陈亮 | 8h | 陈亮 |
| 127 | 5.3 | 查看VM | 1d | 2014-01-27 | 2014-01-27 | 123 | 0d | start no earlier than 2014-01-27 | 陈亮 | 8h | 陈亮 |
| 128 | 5.4 | 修改VM配置信息 | 1d | 2014-01-28 | 2014-01-28 | 127 | 0d |  | 陈亮 | 8h | 陈亮 |
| 129 | 5.5 | 重启VM | 1d | 2014-01-29 | 2014-01-29 | 128 | 0d |  | 陈亮 | 8h | 陈亮 |
| 130 | 5.6 | VM开机 | 1d | 2014-01-30 | 2014-01-30 | 129 | 0d |  | 陈亮 | 8h | 陈亮 |
| 131 | 5.7 | VM重装系统 | 1d | 2014-01-31 | 2014-01-31 | 130 | 0d |  | 陈亮 | 8h | 陈亮 |
| 132 | 5.8 | 创建域用户 | 1d | 2014-02-03 | 2014-02-03 | 131 | 0d |  | 陈亮 | 8h | 陈亮 |
