# 项目进度

Schedule from MS Project, 2013-07-08 to 2013-07-31, costs in ¥, A marks actual dates.

## Calendars

- 标准: Mon-Fri 08:00-12:00, 13:00-17:00; Sat-Sun off.

## Resources

| Resource | Rate |
| --- | --- |
| 张建华 | 40 |
| 卢佳 | 40 |
| 李智林 | 40 |
| 周雯 | 40 |
| 陈亮 | 40 |

## Schedule

| ID | WBS | Task | Duration | Start | Finish | Predecessors | Complete | Remaining | Total slack | Free slack | Constraint | Resources | Work | Actual work | Cost | Actual cost |
| --- | --- | --- | --- | --- | --- | --- | --- | --- | --- | --- | --- | --- | --- | --- | --- | --- |
| 1 | 1 | **人力资源模块** | 18d? | 2013-07-08 A | 2013-07-31 |  | 66% | 6.19d? | 0d |  |  |  | 288h | 200h | 11,840 | 8,320 |
| 2 | 1.1 | 内部需求 | 2d | 2013-07-08 A | 2013-07-09 A |  | 100% |  |  |  | start no earlier than 2013-07-08 | 张建华; 卢佳 | 32h | 32h | 1,280 | 1,280 |
| 3 | 1.2 | 需求调研 | 2d | 2013-07-10 A | 2013-07-11 A | 2 | 100% |  |  |  |  | 张建华 | 16h | 16h | 640 | 640 |
| 4 | 1.3 | 需求汇总 | 1d | 2013-07-12 A | 2013-07-12 A | 3 | 100% |  |  |  |  | 李智林; 卢佳 | 16h | 16h | 640 | 640 |
| 5 | 1.4 | **原型设计** | 3d | 2013-07-15 A | 2013-07-17 A | 4 | 100% |  |  |  |  |  | 48h | 48h | 1,920 | 1,920 |
| 6 | 1.4.1 | 部门岗位员工固定资产 | 3d | 2013-07-15 A | 2013-07-17 A |  | 100% |  |  |  |  | 卢佳 | 24h | 24h | 960 | 960 |
| 7 | 1.4.2 | 考勤机构员工合同 | 3d | 2013-07-15 A | 2013-07-17 A |  | 100% |  |  |  |  | 李智林 | 24h | 24h | 960 | 960 |
| 8 | 1.5 | 评审原型 | 1d | 2013-07-18 A | 2013-07-18 A | 6 | 100% |  |  |  |  | 张建华 | 8h | 8h | 320 | 320 |
| 9 | 1.6 | 系统设计 | 1d | 2013-07-19 A | 2013-07-19 A | 8 | 100% |  |  |  |  | 张建华; 卢佳 | 16h | 16h | 640 | 640 |
| 10 | 1.7 | **开发编码** | 6d? | 2013-07-22 A | 2013-07-29 |  | 67% | 2d? | 2d |  |  |  | 96h | 64h | 4,160 | 2,880 |
| 11 | 1.7.1 | 考勤 | 3d | 2013-07-22 A | 2013-07-24 A | 9 | 100% |  |  |  |  | 李智林 | 24h | 24h | 1,280 | 1,280 |
| 12 | 1.7.2 | 部门 | 1d | 2013-07-22 A | 2013-07-22 A | 9 | 100% |  |  |  |  | 卢佳 | 8h | 8h | 320 | 320 |
| 13 | 1.7.3 | 岗位 | 1d | 2013-07-23 A | 2013-07-23 A | 12 | 100% |  |  |  |  | 卢佳 | 8h | 8h | 320 | 320 |
| 14 | 1.7.4 | 员工 | 2d | 2013-07-24 A | 2013-07-25 A | 13 | 100% |  |  |  |  | 卢佳 | 16h | 16h | 640 | 640 |
| 15 | 1.7.5 | 固定资产 | 1d | 2013-07-25 A | 2013-07-25 A | 14 | 100% |  |  |  |  | 卢佳 | 8h | 8h | 320 | 320 |
| 16 | 1.7.6 | 机构 | 1d | 2013-07-26 | 2013-07-26 | 11FS+1d |  |  | 1d | 0d |  | 李智林 | 8h |  | 320 |  |
| 17 | 1.7.7 | 员工合同 | 1d | 2013-07-29 | 2013-07-29 | 16 |  |  | 2d |  |  | 李智林 | 8h |  | 320 |  |
| 18 | 1.7.8 | 考勤数据导入 | 2d? | 2013-07-25 | 2013-07-26 |  |  |  | 3d |  | finish no earlier than 2013-07-26 | 陈亮 | 16h |  | 640 |  |
| 19 | 1.8 | 美工网页设计 | 5d? | 2013-07-25 | 2013-07-31 |  |  |  | 0d |  | start no earlier than 2013-07-25 | 周雯 | 40h |  | 1,600 |  |
| 20 | 1.9 | 测试与bug | 1d | 2013-07-29 | 2013-07-29 | 16 |  |  | 1d | 0d |  | 张建华 | 8h |  | 320 |  |
| 21 | 1.10 | 发布及线上测试 | 1d | 2013-07-30 | 2013-07-30 | 20 |  |  | 1d |  |  | 张建华 | 8h |  | 320 |  |
