# 自服务系统项目计划

Schedule from MS Project, 2013-07-16 to 2013-11-18, A marks actual dates.

## Calendars

- 标准: Mon-Fri 08:00-12:00, 13:00-17:00; Sat-Sun off.

## Resources

| Resource |
| --- |
| 陈亮 |
| 陈毅文 |
| 张建华 |
| 周雯 |
| 李智林 |

## Schedule

| ID | WBS | Task | Duration | Start | Finish | Predecessors | Complete | Remaining | Total slack | Resources | Work | Actual work |
| --- | --- | --- | --- | --- | --- | --- | --- | --- | --- | --- | --- | --- |
| 1 | 1 | **自服务系统** | 90d? | 2013-07-16 A | 2013-11-18 |  | 9% | 82.26d? | 0d |  | 1208h | 144h |
| 2 | 1.1 | **内部需求** | 3d | 2013-07-16 A | 2013-07-18 A |  | 100% |  |  |  | 72h | 72h |
| 3 | 1.1.1 | 市场调查 | 2d | 2013-07-16 A | 2013-07-17 A |  | 100% |  |  | 陈亮; 陈毅文; 张建华; 李智林 | 64h | 64h |
| 4 | 1.1.2 | 功能列表 | 1d | 2013-07-18 A | 2013-07-18 A | 3 | 100% |  |  | 陈亮 | 8h | 8h |
| 5 | 1.2 | **详细需求** | 2d | 2013-07-19 A | 2013-07-22 A | 4 | 100% |  |  |  | 64h | 64h |
| 6 | 1.2.1 | 自服务门户网站 | 2d | 2013-07-19 A | 2013-07-22 A |  | 100% |  |  | 李智林; 陈毅文 | 32h | 32h |
| 7 | 1.2.2 | 自服务管理系统 | 2d | 2013-07-19 A | 2013-07-22 A |  | 100% |  |  | 陈亮; 陈毅文 | 32h | 32h |
| 8 | 1.3 | 需求评审 | 1d | 2013-07-22 A | 2013-07-22 A | 4 | 100% |  |  | 张建华 | 8h | 8h |
| 9 | 1.4 | 需求整合 | 3d | 2013-07-23 | 2013-07-25 | 8 |  |  | 0d | 陈亮; 陈毅文 | 48h |  |
| 10 | 1.5 | 原型设计 | 5d | 2013-07-26 | 2013-08-01 | 9 |  |  | 0d | 陈亮; 陈毅文 | 80h |  |
| 11 | 1.6 | 评审原型 | 2d | 2013-08-02 | 2013-08-05 | 10 |  |  | 0d | 张建华 | 16h |  |
| 12 | 1.7 | 美工网页设计 | 15d? | 2013-08-06 | 2013-08-26 | 11 |  |  | 0d | 周雯 | 120h |  |
| 13 | 1.8 | 系统设计 | 10d? | 2013-08-27 | 2013-09-09 | 12 |  |  | 0d | 陈毅文; 陈亮 | 160h |  |
| 14 | 1.9 | 开发编码 | 30d? | 2013-09-10 | 2013-10-21 | 13 |  |  | 0d | 陈毅文; 陈亮 | 480h |  |
| 15 | 1.10 | 测试与bug | 10d? | 2013-10-22 | 2013-11-04 | 14 |  |  | 0d | 张建华 | 80h |  |
| 16 | 1.11 | 发布及线上测试 | 10d? | 2013-11-05 | 2013-11-18 | 15 |  |  | 0d | 张建华 | 80h |  |
